# Ekos2_Project

How a schedule from MS Project changed from version to version. A marks actual dates.

## Version 1 (saved 2009-11-11)

Note of the change: Concluído o planajamento do M1.

| ID | WBS | Task | Duration | Start | Finish | Predecessors | Total float | Constraint |
| --- | --- | --- | --- | --- | --- | --- | --- | --- |
| 1 | 1 | **M1** | 26d | 2009-11-11 | 2009-12-16 |  | 0d |  |
| 2 | 1.1 | **Design** | 3d | 2009-11-11 | 2009-11-13 |  | 0d |  |
| 3 | 1.1.1 | **Cockpit** | 3d | 2009-11-11 | 2009-11-13 |  | 0d |  |
| 4 | 1.1.1.1 | **IDM** | 3d | 2009-11-11 | 2009-11-13 |  | 23d |  |
| 5 |  | SSO | 1d | 2009-11-11 | 2009-11-11 |  | 23d | start no earlier than 2009-11-11 |
| 6 |  | Self-Service | 2d | 2009-11-12 | 2009-11-13 | 5 | 23d |  |
| 7 | 1.1.1.2 | **General** | 3d | 2009-11-11 | 2009-11-13 |  | 0d |  |
| 8 |  | StartUp | 3d | 2009-11-11 | 2009-11-13 |  | 0d | start no earlier than 2009-11-11 |
| 9 | 1.2 | **Application** | 23d | 2009-11-16 | 2009-12-16 |  | 0d |  |
| 10 | 1.2.1 | **Relationship** | 10d | 2009-11-16 | 2009-11-27 |  | 0d |  |
| 11 | 1.2.1.1 | **Avatar** | 5d | 2009-11-16 | 2009-11-20 |  | 0d |  |
| 12 |  | StartUp | 1d | 2009-11-16 | 2009-11-16 | 8 | 0d | start no earlier than 2009-11-16 |
| 13 |  | Add Friend | 1d | 2009-11-17 | 2009-11-17 | 12 | 0d |  |
| 14 |  | Ignore | 1d | 2009-11-18 | 2009-11-18 | 13 | 0d |  |
| 15 |  | View Profile | 1d | 2009-11-19 | 2009-11-19 | 14 | 0d |  |
| 16 |  | Send Message | 1d | 2009-11-20 | 2009-11-20 | 15 | 0d |  |
| 17 |  | Profile | 1w | 2009-11-16 | 2009-11-20 |  | 13d |  |
| 18 |  | Friend | 1w | 2009-11-23 | 2009-11-27 | 12, 17 | 13d |  |
| 19 |  | Message | 0.5w | 2009-11-23 | 2009-11-25 | 16 | 0d |  |
| 20 |  | Scrap | 0.5w | 2009-11-25 | 2009-11-27 | 19 | 0d |  |
| 21 | 1.2.2 | **Content** | 13d | 2009-11-30 | 2009-12-16 | 20 | 0d |  |
| 22 | 1.2.2.1 | **Container** | 3d | 2009-11-30 | 2009-12-02 |  | 5d |  |
| 23 |  | Painel | 3d | 2009-11-30 | 2009-12-02 |  | 5d |  |
| 24 | 1.2.2.2 | **Increment** | 8d | 2009-11-30 | 2009-12-09 |  | 0d |  |
| 25 |  | Comment | 3d | 2009-12-07 | 2009-12-09 | 30 | 5d |  |
| 26 |  | Recommendation | 0w | 2009-11-30 | 2009-11-30 |  | 0d | start no earlier than 2009-11-30 |
| 27 |  | Poll | 3d | 2009-11-30 | 2009-12-02 | 26 | 0d |  |
| 28 |  | Survey | 1w | 2009-12-03 | 2009-12-09 | 27 | 0d |  |
| 29 | 1.2.2.3 | **Type** | 2d | 2009-12-03 | 2009-12-04 |  | 5d |  |
| 30 |  | Blog | 2d | 2009-12-03 | 2009-12-04 | 23 | 5d |  |
| 31 |  | Bookmark | 2d | 2009-12-03 | 2009-12-04 | 22 | 8d |  |
| 32 |  | Search | 1w | 2009-12-10 | 2009-12-16 | 28 | 0d |  |
| 33 |  | M2 | 0w? | 2009-12-16 | 2009-12-16 | 1 | 0d |  |
| 34 | 3 | **Não planejado** | 1.33d? | 2009-12-16 | 2009-12-18 | 33 | 0d |  |
| 35 | 3.1 | **Application** | 1.33d? | 2009-12-17 | 2009-12-18 |  | 0d |  |
| 36 |  | Calendar | 1.33d? | 2009-12-17 | 2009-12-18 |  | 0d |  |
| 37 |  | File manager | 1.33d? | 2009-12-17 | 2009-12-18 |  | 0d |  |
| 38 |  | Microblog | 1.33d? | 2009-12-17 | 2009-12-18 |  | 0d |  |
| 39 |  | Note | 1.33d? | 2009-12-17 | 2009-12-18 |  | 0d |  |
| 40 | 3.1.5 | **Furure** | 1.33d? | 2009-12-17 | 2009-12-18 |  | 0d |  |
| 41 |  | Issue Tracker | 1.33d? | 2009-12-17 | 2009-12-18 |  | 0d |  |
| 42 |  | News reader | 1.33d? | 2009-12-17 | 2009-12-18 |  | 0d |  |
| 43 |  | Project Manager | 1.33d? | 2009-12-17 | 2009-12-18 |  | 0d |  |
| 44 | 3.2 | **Content** | 1.33d? | 2009-12-16 | 2009-12-18 |  | 0d |  |
| 45 |  | History | 1.33d? | 2009-12-17 | 2009-12-18 |  | 0d |  |
| 46 | 3.2.2 | **Type** | 0d? | 2009-12-16 | 2009-12-16 |  | 1.33d |  |
| 47 |  | Wiki | 0w? | 2009-12-16 | 2009-12-16 |  | 1.33d |  |
| 48 |  | Course | 0w | 2009-12-16 | 2009-12-16 |  | 1.33d |  |
| 49 | 3.2.3 | **Increment** | 1.33d? | 2009-12-17 | 2009-12-18 |  | 0d |  |
| 50 |  | Calendar Link | 1.33d? | 2009-12-17 | 2009-12-18 |  | 0d |  |
| 51 |  | Event | 1.33d? | 2009-12-17 | 2009-12-18 |  | 0d |  |
| 52 |  | User Voting | 1.33d? | 2009-12-17 | 2009-12-18 |  | 0d |  |
| 53 | 3.2.4 | **Search** | 1.33d? | 2009-12-17 | 2009-12-18 |  | 0d |  |
| 54 |  | Advanced | 1.33d? | 2009-12-17 | 2009-12-18 |  | 0d |  |
| 55 | 3.2.4.2 | **Result** | 1.33d? | 2009-12-17 | 2009-12-18 |  | 0d |  |
| 56 |  | Grouping | 1.33d? | 2009-12-17 | 2009-12-18 |  | 0d |  |
| 57 |  | Order | 1.33d? | 2009-12-17 | 2009-12-18 |  | 0d |  |
| 58 |  | View model | 1.33d? | 2009-12-17 | 2009-12-18 |  | 0d |  |
| 59 | 3.3 | **Context** | 1.33d? | 2009-12-16 | 2009-12-18 |  | 0d |  |
| 60 |  | Content | 0w? | 2009-12-16 | 2009-12-16 |  | 1.33d |  |
| 61 |  | Node | 0w? | 2009-12-16 | 2009-12-16 |  | 1.33d |  |
| 62 |  | Calendar | 1.33d? | 2009-12-17 | 2009-12-18 |  | 0d |  |
| 63 |  | Notification | 1.33d? | 2009-12-17 | 2009-12-18 |  | 0d |  |
| 64 |  | Profile | 1.33d? | 2009-12-17 | 2009-12-18 |  | 0d |  |
| 65 | 3.4 | **Design** | 1.33d? | 2009-12-17 | 2009-12-18 |  | 0d |  |
| 66 | 3.4.1 | **Cockpit** | 1.33d? | 2009-12-17 | 2009-12-18 |  | 0d |  |
| 67 |  | Administrator | 1.33d? | 2009-12-17 | 2009-12-18 |  | 0d |  |
| 68 |  | Manager | 1.33d? | 2009-12-17 | 2009-12-18 |  | 0d |  |
| 69 |  | Widget | 1.33d? | 2009-12-17 | 2009-12-18 |  | 0d |  |
| 70 |  | Theme | 1.33d? | 2009-12-17 | 2009-12-18 |  | 0d |  |

| ID | WBS | Task | Duration | Start | Finish | Total float |
| --- | --- | --- | --- | --- | --- | --- |
| 71 | 3.5 | **IDM** | 1.33d? | 2009-12-17 | 2009-12-18 | 0d |
| 72 | 3.5.1 | **Admin** | 1.33d? | 2009-12-17 | 2009-12-18 | 0d |
| 73 |  | Bulk | 1.33d? | 2009-12-17 | 2009-12-18 | 0d |
| 74 |  | CRUD | 1.33d? | 2009-12-17 | 2009-12-18 | 0d |
| 75 | 3.5.2 | **Service** | 1.33d? | 2009-12-17 | 2009-12-18 | 0d |
| 76 |  | Conference | 1.33d? | 2009-12-17 | 2009-12-18 | 0d |
| 77 |  | Instant Message | 1.33d? | 2009-12-17 | 2009-12-18 | 0d |
| 78 |  | Notification | 1.33d? | 2009-12-17 | 2009-12-18 | 0d |
| 79 |  | Search | 1.33d? | 2009-12-17 | 2009-12-18 | 0d |

## Version 2 (saved 2009-11-12)

Note of the change: Adicionado comentário ao status do account. Gerado o código do projeto Entity.

Last finish stays 2009-12-18.

Changed:

| ID | Task | Other |
| --- | --- | --- |
| 1 | **M1** | baseline start none → 2009-11-11; baseline finish none → 2009-12-16 |
| 2 | **Design** | baseline start none → 2009-11-11; baseline finish none → 2009-11-13 |
| 3 | **Cockpit** | baseline start none → 2009-11-11; baseline finish none → 2009-11-13 |
| 4 | **IDM** | baseline start none → 2009-11-11; baseline finish none → 2009-11-13 |
| 5 | SSO | baseline start none → 2009-11-11; baseline finish none → 2009-11-11 |
| 6 | Self-Service | baseline start none → 2009-11-12; baseline finish none → 2009-11-13 |
| 7 | **General** | baseline start none → 2009-11-11; baseline finish none → 2009-11-13 |
| 8 | StartUp | baseline start none → 2009-11-11; baseline finish none → 2009-11-13 |
| 9 | **Application** | baseline start none → 2009-11-16; baseline finish none → 2009-12-16 |
| 10 | **Relationship** | baseline start none → 2009-11-16; baseline finish none → 2009-11-27 |
| 11 | **Avatar** | baseline start none → 2009-11-16; baseline finish none → 2009-11-20 |
| 12 | StartUp | baseline start none → 2009-11-16; baseline finish none → 2009-11-16 |
| 13 | Add Friend | baseline start none → 2009-11-17; baseline finish none → 2009-11-17 |
| 14 | Ignore | baseline start none → 2009-11-18; baseline finish none → 2009-11-18 |
| 15 | View Profile | baseline start none → 2009-11-19; baseline finish none → 2009-11-19 |
| 16 | Send Message | baseline start none → 2009-11-20; baseline finish none → 2009-11-20 |
| 17 | Profile | baseline start none → 2009-11-16; baseline finish none → 2009-11-20 |
| 18 | Friend | baseline start none → 2009-11-23; baseline finish none → 2009-11-27 |
| 19 | Message | baseline start none → 2009-11-23; baseline finish none → 2009-11-25 |
| 20 | Scrap | baseline start none → 2009-11-25; baseline finish none → 2009-11-27 |
| 21 | **Content** | baseline start none → 2009-11-30; baseline finish none → 2009-12-16 |
| 22 | **Container** | baseline start none → 2009-11-30; baseline finish none → 2009-12-02 |
| 23 | Painel | baseline start none → 2009-11-30; baseline finish none → 2009-12-02 |
| 24 | **Increment** | baseline start none → 2009-11-30; baseline finish none → 2009-12-09 |
| 25 | Comment | baseline start none → 2009-12-07; baseline finish none → 2009-12-09 |
| 26 | Recommendation | baseline start none → 2009-11-30; baseline finish none → 2009-11-30 |
| 27 | Poll | baseline start none → 2009-11-30; baseline finish none → 2009-12-02 |
| 28 | Survey | baseline start none → 2009-12-03; baseline finish none → 2009-12-09 |
| 29 | **Type** | baseline start none → 2009-12-03; baseline finish none → 2009-12-04 |
| 30 | Blog | baseline start none → 2009-12-03; baseline finish none → 2009-12-04 |
| 31 | Bookmark | baseline start none → 2009-12-03; baseline finish none → 2009-12-04 |
| 32 | Search | baseline start none → 2009-12-10; baseline finish none → 2009-12-16 |
| 33 | M2 | baseline start none → 2009-12-16; baseline finish none → 2009-12-16 |
| 34 | **Não planejado** | baseline start none → 2009-12-16; baseline finish none → 2009-12-18 |
| 35 | **Application** | baseline start none → 2009-12-17; baseline finish none → 2009-12-18 |
| 36 | Calendar | baseline start none → 2009-12-17; baseline finish none → 2009-12-18 |
| 37 | File manager | baseline start none → 2009-12-17; baseline finish none → 2009-12-18 |
| 38 | Microblog | baseline start none → 2009-12-17; baseline finish none → 2009-12-18 |
| 39 | Note | baseline start none → 2009-12-17; baseline finish none → 2009-12-18 |
| 40 | **Furure** | baseline start none → 2009-12-17; baseline finish none → 2009-12-18 |
| 41 | Issue Tracker | baseline start none → 2009-12-17; baseline finish none → 2009-12-18 |
| 42 | News reader | baseline start none → 2009-12-17; baseline finish none → 2009-12-18 |
| 43 | Project Manager | baseline start none → 2009-12-17; baseline finish none → 2009-12-18 |
| 44 | **Content** | baseline start none → 2009-12-16; baseline finish none → 2009-12-18 |
| 45 | History | baseline start none → 2009-12-17; baseline finish none → 2009-12-18 |
| 46 | **Type** | baseline start none → 2009-12-16; baseline finish none → 2009-12-16 |
| 47 | Wiki | baseline start none → 2009-12-16; baseline finish none → 2009-12-16 |
| 48 | Course | baseline start none → 2009-12-16; baseline finish none → 2009-12-16 |
| 49 | **Increment** | baseline start none → 2009-12-17; baseline finish none → 2009-12-18 |
| 50 | Calendar Link | baseline start none → 2009-12-17; baseline finish none → 2009-12-18 |
| 51 | Event | baseline start none → 2009-12-17; baseline finish none → 2009-12-18 |
| 52 | User Voting | baseline start none → 2009-12-17; baseline finish none → 2009-12-18 |
| 53 | **Search** | baseline start none → 2009-12-17; baseline finish none → 2009-12-18 |
| 54 | Advanced | baseline start none → 2009-12-17; baseline finish none → 2009-12-18 |
| 55 | **Result** | baseline start none → 2009-12-17; baseline finish none → 2009-12-18 |
| 56 | Grouping | baseline start none → 2009-12-17; baseline finish none → 2009-12-18 |
| 57 | Order | baseline start none → 2009-12-17; baseline finish none → 2009-12-18 |
| 58 | View model | baseline start none → 2009-12-17; baseline finish none → 2009-12-18 |
| 59 | **Context** | baseline start none → 2009-12-16; baseline finish none → 2009-12-18 |
| 60 | Content | baseline start none → 2009-12-16; baseline finish none → 2009-12-16 |
| 61 | Node | baseline start none → 2009-12-16; baseline finish none → 2009-12-16 |
| 62 | Calendar | baseline start none → 2009-12-17; baseline finish none → 2009-12-18 |
| 63 | Notification | baseline start none → 2009-12-17; baseline finish none → 2009-12-18 |
| 64 | Profile | baseline start none → 2009-12-17; baseline finish none → 2009-12-18 |
| 65 | **Design** | baseline start none → 2009-12-17; baseline finish none → 2009-12-18 |
| 66 | **Cockpit** | baseline start none → 2009-12-17; baseline finish none → 2009-12-18 |
| 67 | Administrator | baseline start none → 2009-12-17; baseline finish none → 2009-12-18 |
| 68 | Manager | baseline start none → 2009-12-17; baseline finish none → 2009-12-18 |
| 69 | Widget | baseline start none → 2009-12-17; baseline finish none → 2009-12-18 |
| 70 | Theme | baseline start none → 2009-12-17; baseline finish none → 2009-12-18 |

| ID | Task | Other |
| --- | --- | --- |
| 71 | **IDM** | baseline start none → 2009-12-17; baseline finish none → 2009-12-18 |
| 72 | **Admin** | baseline start none → 2009-12-17; baseline finish none → 2009-12-18 |
| 73 | Bulk | baseline start none → 2009-12-17; baseline finish none → 2009-12-18 |
| 74 | CRUD | baseline start none → 2009-12-17; baseline finish none → 2009-12-18 |
| 75 | **Service** | baseline start none → 2009-12-17; baseline finish none → 2009-12-18 |
| 76 | Conference | baseline start none → 2009-12-17; baseline finish none → 2009-12-18 |
| 77 | Instant Message | baseline start none → 2009-12-17; baseline finish none → 2009-12-18 |
| 78 | Notification | baseline start none → 2009-12-17; baseline finish none → 2009-12-18 |
| 79 | Search | baseline start none → 2009-12-17; baseline finish none → 2009-12-18 |
